# Corsham Street - L9 - B4 - Summary

Schedule from Primavera P6, 2026-09-07 to 2027-09-19, data date 2026-09-07.
Must finish by 2027-09-19

## Calendars

- Standard 5 Day: Mon-Fri 08:00-12:00, 13:00-17:00; Sat-Sun off.

## Schedule

| ID | WBS | Activity | Type | Duration | Start | Finish | Total float | Constraint | Trade |
| --- | --- | --- | --- | --- | --- | --- | --- | --- | --- |
|  | 1 | **Design** |  |  | 2026-09-07 | 2027-03-03 |  |  |  |
| A1010 |  | GPAD Design Period - V6 |  | 92d | 2026-09-07 | 2027-01-22 | 171d | start on or after 2026-09-07 | ARCHITECTURALDESIGN |
| A1020 |  | GPAD scheme review & client mock-up reviews |  | 30d | 2026-09-07 | 2026-10-16 | 233d | start on or after 2026-09-07 | ARCHITECTURALDESIGN |
| A1030 |  | Planning (proposal, council, pre-app, written response) |  | 60d | 2026-09-28 | 2026-12-18 | 188d | start on or after 2026-09-28 | ARCHITECTURALDESIGN |
| A1060 |  | M&E & lighting design |  | 105d | 2026-09-28 | 2027-03-03 | 143d | start on or after 2026-09-28 | ME |
| A1040 |  | Strip-out, fire strategy & structural design (stairs / lift) |  | 45d | 2026-10-19 | 2026-12-18 | 188d | start on or after 2026-10-19 | ARCHITECTURALDESIGN |
| A1050 |  | Interior design - Stage 2 & Stage 3+ (general, guest rooms, BOH, kitchen) |  | 75d | 2026-11-02 | 2027-02-24 | 148d | start on or after 2026-11-02 | ARCHITECTURALDESIGN |
| A1070 |  | Issue of Stage 3+ design information | milestone | 0d | 2027-01-29 | 2027-01-29 | 166d | start on or after 2027-01-29 | ARCHITECTURALDESIGN |
|  | 2 | **Pre-construction & Procurement** |  |  | 2026-10-19 | 2027-01-15 |  |  |  |
| A1080 |  | Tender & initial pricing |  | 16d | 2026-10-19 | 2026-11-09 | 217d | start on or after 2026-10-19 | PRECON |
| A1100 |  | Long lead & general orders |  | 17d | 2026-11-20 | 2026-12-14 | 192d | start on or after 2026-11-20 | PRECON |
| A1090 |  | Contract award | milestone | 0d | 2026-11-20 | 2026-11-20 | 208d | start on or after 2026-11-20 | PRECON |
| A1110 |  | Stage 2 tender & negotiations |  | 27d | 2026-11-30 | 2027-01-15 | 176d | start on or after 2026-11-30 | PRECON |
| A1120 |  | Mobilisation |  | 10d | 2026-12-15 | 2027-01-07 | 182d | start on or after 2026-12-15 | PRECON |
| A1130 |  | Stage 2 contract award | milestone | 0d | 2027-01-15 | 2027-01-15 | 176d | start on or after 2027-01-15 | PRECON |
|  | 3 | **Enabling Works** |  |  | 2026-11-06 | 2027-01-22 |  |  |  |
| A1140 |  | Enabling package pricing & LOI |  | 16d | 2026-11-06 | 2026-11-27 | 203d | start on or after 2026-11-06 | ENABLINGWORKSSTRIPOU |
| A1160 |  | Site set-up, strip-out & M&E validation |  | 32d | 2026-11-30 | 2027-01-22 | 171d | start on or after 2026-11-30 | ENABLINGWORKSSTRIPOU |
| A1150 |  | Start on site | milestone | 0d | 2026-11-30 | 2026-11-30 | 202d | start on or after 2026-11-30 | ENABLINGWORKSSTRIPOU |
| A1170 |  | Structural enabling works (fire protection, new lift & stair) |  | 27d | 2026-12-07 | 2027-01-22 | 171d | start on or after 2026-12-07 | ENABLINGWORKSSTRIPOU |
|  | 4 | **L2 to B4 - Public & Amenity Areas** |  |  | 2027-01-18 | 2027-09-17 |  |  |  |
| A1180 |  | Construction start | milestone | 0d | 2027-01-18 | 2027-01-18 | 175d | start on or after 2027-01-18 | SITEWORKS |
| A1190 |  | M&E first fix |  | 41d | 2027-01-19 | 2027-03-16 | 134d | start on or after 2027-01-19 | ME |
| A1210 |  | New lift - lead time & install |  | 85d | 2027-01-25 | 2027-05-21 | 86d | start on or after 2027-01-25 | ENABLINGWORKSSTRIPOU |
| A1200 |  | Partitions, ceilings & firestopping |  | 125d | 2027-02-01 | 2027-07-23 | 41d | start on or after 2027-02-01 | DRYLININGPARTITIONS |
| A1220 |  | Joinery design, procurement & lead times |  | 104d | 2027-03-01 | 2027-07-22 | 42d | start on or after 2027-03-01 | JOINERYFITOUT |
| A1240 |  | Floor finishes & tiling |  | 81d | 2027-04-14 | 2027-08-04 | 33d | start on or after 2027-04-14 | FINISHESDECORATION |
| A1230 |  | M&E second fix |  | 80d | 2027-05-10 | 2027-08-27 | 16d | start on or after 2027-05-10 | ME |
| A1250 |  | Joinery & fit-out installation |  | 41d | 2027-06-18 | 2027-08-13 | 26d | start on or after 2027-06-18 | JOINERYFITOUT |
| A1270 |  | Kitchen, wellness & FF&E installation |  | 60d | 2027-06-21 | 2027-09-10 | 6d | start on or after 2027-06-21 | FFEEQUIPMENT |
| A1260 |  | Decorations & wall finishes |  | 57d | 2027-06-28 | 2027-09-14 | 4d | start on or after 2027-06-28 | FINISHESDECORATION |
| A1280 |  | Testing & commissioning |  | 42d | 2027-07-12 | 2027-09-07 | 9d | start on or after 2027-07-12 | COMMISSIONINGHANDOVE |
| A1290 |  | Snagging & cleans |  | 17d | 2027-08-26 | 2027-09-17 | 1d | start on or after 2027-08-26 | INTERNALPM |
| A1300 |  | Client inspection & sign off |  | 1d | 2027-09-14 | 2027-09-14 | 4d | start on or after 2027-09-14 | COMMISSIONINGHANDOVE |

| ID | WBS | Activity | Type | Duration | Start | Finish | Total float | Constraint | Trade |
| --- | --- | --- | --- | --- | --- | --- | --- | --- | --- |
|  | 5 | **L3 to L9 - Guest Rooms & Corridors** |  |  | 2027-01-18 | 2027-09-17 |  |  |  |
| A1310 |  | M&E first fix (all guest floors) |  | 70d | 2027-01-18 | 2027-04-23 | 106d | start on or after 2027-01-18 | ME |
| A1320 |  | Drylining walls & ceilings - 1st & 2nd fix |  | 135d | 2027-02-08 | 2027-08-13 | 26d | start on or after 2027-02-08 | DRYLININGPARTITIONS |
| A1330 |  | Joinery & doors - ROD drawings & manufacture |  | 95d | 2027-03-08 | 2027-07-16 | 46d | start on or after 2027-03-08 | JOINERYFITOUT |
| A1340 |  | M&E second fix (all guest floors) |  | 65d | 2027-03-29 | 2027-06-25 | 61d | start on or after 2027-03-29 | ME |
| A1350 |  | Bathroom tiling & floor finishes |  | 50d | 2027-05-24 | 2027-07-30 | 36d | start on or after 2027-05-24 | FINISHESDECORATION |
| A1360 |  | Joinery & door installation |  | 55d | 2027-05-31 | 2027-08-13 | 26d | start on or after 2027-05-31 | JOINERYFITOUT |
| A1370 |  | Decorations & corridor finishes |  | 65d | 2027-06-14 | 2027-09-10 | 6d | start on or after 2027-06-14 | FINISHESDECORATION |
| A1390 |  | Builders & sparkle cleans |  | 50d | 2027-07-12 | 2027-09-17 | 1d | start on or after 2027-07-12 | INTERNALPM |
| A1380 |  | Fixed FF&E & white goods |  | 35d | 2027-07-26 | 2027-09-10 | 6d | start on or after 2027-07-26 | FFEEQUIPMENT |
|  | 6 | **Completion** |  |  | 2027-09-14 | 2027-09-19 |  |  |  |
| A1400 |  | Practical Completion | milestone | 0d | 2027-09-14 | 2027-09-14 | 4d | start on or after 2027-09-14 | COMMISSIONINGHANDOVE |
| A1410 |  | Handover | milestone | 0d | 2027-09-19 | 2027-09-19 | 1d | start on or after 2027-09-19 | CLIENT |

## Activity codes

| Code | Value | Meaning |
| --- | --- | --- |
| Trade | ARCHITECTURALDESIGN | Architectural Design |
| Trade | CLIENT | Client |
| Trade | COMMISSIONINGHANDOVE | Commissioning & Handover |
| Trade | DRYLININGPARTITIONS | Dry-lining & Partitions |
| Trade | ENABLINGWORKSSTRIPOU | Enabling Works / Strip-out |
| Trade | FFEEQUIPMENT | FF&E & Equipment |
| Trade | FINISHESDECORATION | Finishes & Decoration |
| Trade | INTERNALPM | Internal PM |
| Trade | JOINERYFITOUT | Joinery & Fit-out |
| Trade | ME | M&E |
| Trade | PRECON | Precon |
| Trade | SITEWORKS | Site works |
